# БилетON

Schedule from MS Project XML, 2026-10-19 to 2026-12-11.

## Calendars

- Стандартный (с праздником 04.11): Mon-Fri 08:00-12:00, 13:00-17:00; Sat-Sun off. Exceptions (off unless hours are given): 2026-11-04.

## Resources

| Resource | Group |
| --- | --- |
| PM / Backend | Команда БилетON |
| Lead Dev | Команда БилетON |
| Frontend | Команда БилетON |
| QA | Команда БилетON |
| Аналитик | Команда БилетON |

## Schedule

| ID | WBS | Task | Type | Duration | Start | Finish | Predecessors | Resources |
| --- | --- | --- | --- | --- | --- | --- | --- | --- |
| 1 | 1 | Управление проектом и документация (командный менеджмент) |  | 312h | 2026-10-19 08:00 | 2026-12-11 17:00 |  |  |
| 2 | 2 | Организация инфраструктуры разработки (DevOps) |  | 300h | 2026-10-20 08:00 | 2026-12-11 12:00 |  |  |
| 3 | 3 | Модуль «Авторизация и профиль» (Спринт 1) |  | 52h | 2026-10-20 13:00 | 2026-10-28 17:00 |  |  |
| 4 | 4 | Модуль «Афиша и сеансы» (Спринт 2) |  | 30h | 2026-11-02 08:00 | 2026-11-06 15:00 |  |  |
| 5 | 5 | Модуль «Схема зала и бронирование» (Спринт 3) |  | 44h | 2026-11-16 08:00 | 2026-11-23 12:00 |  |  |
| 6 | 6 | **Спринт 4. Оплата, QR, панель контроллера и финальное тестирование** |  | 64h | 2026-11-30 08:00 | 2026-12-09 17:00 |  |  |
| 7 | 1.0 | **Еженедельные практики (повторяющиеся задачи)** |  | 276h | 2026-10-19 08:00 | 2026-12-07 12:00 |  |  |
| 8 | 1.0.1 | Модерация Scrum-событий (планирование спринтов, дейли, ретро) |  | 1h | 2026-10-19 08:00 | 2026-10-19 09:00 |  |  |
| 17 | 1.0.2 | Участие в ежедневных летучках и обновление статусов в Trello/Jira |  | 1h | 2026-10-19 08:00 | 2026-10-19 09:00 |  |  |
| 26 | 1.0.3 | Ведение реестра рисков и расчёт метрик EVM |  | 1h | 2026-10-19 08:00 | 2026-10-19 09:00 |  |  |
| 35 | 1.1 | Разработка Устава проекта, согласование со стейкхолдерами |  | 8h | 2026-10-20 13:00 | 2026-10-21 12:00 |  | PM / Backend |
| 36 | 1.2 | Декомпозиция WBS, построение диаграммы Ганта |  | 4h | 2026-10-20 08:00 | 2026-10-20 12:00 |  | PM / Backend; Lead Dev; Frontend; QA; Аналитик |
| 37 | 1.6 | Финальная ретроспектива (Start-Stop-Continue) |  | 2h | 2026-12-10 08:00 | 2026-12-10 10:00 | 88 | PM / Backend; Lead Dev; Frontend; QA; Аналитик |
| 38 | 1.7 | Внедрение и сопровождение User Manual |  | 4h | 2026-12-02 13:00 | 2026-12-02 17:00 |  | PM / Backend |
| 39 | 1.8 | Сборка портфолио и подготовка презентации к защите |  | 8h | 2026-12-03 08:00 | 2026-12-03 17:00 | 38 | PM / Backend |
| 40 | 1.9 | Подготовка к защите, сдача проекта |  | 4h | 2026-12-10 10:00 | 2026-12-10 15:00 | 37, 39 | PM / Backend; Lead Dev; Frontend; QA; Аналитик |
| 41 | 1.10 | Защита проекта | milestone | 0h | 2026-12-11 13:00 | 2026-12-11 13:00 | 40, 48 |  |
| 42 | 1.11 | Проект завершён (дедлайн 13.12) | milestone | 0h | 2026-12-11 17:00 | 2026-12-11 17:00 | 41 |  |
| 43 | 2.1 | Инициализация Git-репозитория, настройка Git-flow (main, dev, feature) |  | 4h | 2026-10-21 13:00 | 2026-10-21 17:00 |  | PM / Backend |
| 44 | 2.2 | Разработка инструкции по локальному запуску проекта (README) |  | 4h | 2026-10-20 13:00 | 2026-10-20 17:00 |  | Lead Dev |
| 45 | 2.3 | Настройка пайплайна CI (GitHub Actions: линтеры/тесты) |  | 6h | 2026-10-22 08:00 | 2026-10-22 15:00 | 43, 44 | PM / Backend |
| 46 | 2.4 | Развёртывание локальной СУБД PostgreSQL для тестов |  | 4h | 2026-10-20 13:00 | 2026-10-20 17:00 |  | QA |
| 47 | 2.5 | Настройка скриптов деплоя на тестовый сервер (VPS) |  | 6h | 2026-10-27 08:00 | 2026-10-27 15:00 | 45 | Lead Dev |
| 48 | 2.6 | Деплой финальной версии на сервер |  | 4h | 2026-12-11 08:00 | 2026-12-11 12:00 |  | Lead Dev |
| 49 | 3.1 | Написание Use Cases и критериев DoD для входа/регистрации |  | 4h | 2026-10-20 13:00 | 2026-10-20 17:00 |  | Аналитик |
| 50 | 3.2 | Проектирование и создание таблицы users |  | 4h | 2026-10-22 15:00 | 2026-10-23 10:00 | 49 | PM / Backend |
| 51 | 3.3 | Реализация JWT-авторизации и разграничения ролей |  | 12h | 2026-10-23 10:00 | 2026-10-26 15:00 | 50 | Lead Dev |
| 52 | 3.4 | Вёрстка страниц входа и регистрации по макету |  | 8h | 2026-10-21 08:00 | 2026-10-21 17:00 | 49 | Frontend |
| 53 | 3.5 | Интеграция форм с API авторизации (сохранение токена) |  | 6h | 2026-10-27 08:00 | 2026-10-27 15:00 | 51, 52 | Frontend |
| 54 | 3.6 | Написание чек-листа тестирования безопасности |  | 2h | 2026-10-21 08:00 | 2026-10-21 10:00 | 49 | Аналитик; QA |
| 55 | 3.7 | Прогон тестов, заведение багов в Jira |  | 4h | 2026-10-27 15:00 | 2026-10-28 10:00 | 53, 54 | Frontend; QA |
| 56 | 3.8 | Спринт 1 принят | milestone | 0h | 2026-10-28 10:00 | 2026-10-28 10:00 | 55 |  |
| 57 | 4.1 | Формирование User Stories на просмотр афиши и расписания |  | 2h | 2026-11-02 08:00 | 2026-11-02 10:00 | 56FS+2.88d | Аналитик |
| 58 | 4.2 | Создание таблиц movies, sessions |  | 6h | 2026-11-02 13:00 | 2026-11-03 10:00 | 57 | PM / Backend |
| 59 | 4.3 | Разработка эндпоинтов GET /movies и GET /sessions |  | 8h | 2026-11-03 10:00 | 2026-11-05 10:00 | 58 | Lead Dev |
| 60 | 4.4 | Вёрстка карточек фильмов и страницы выбора сеанса |  | 10h | 2026-11-02 13:00 | 2026-11-03 15:00 | 57 | Frontend |
| 61 | 4.5 | Подключение API афиши к интерфейсу |  | 6h | 2026-11-05 10:00 | 2026-11-05 17:00 | 59, 60 | Frontend |
| 62 | 4.6 | Написание тест-кейсов на отображение пустого расписания |  | 2h | 2026-11-02 13:00 | 2026-11-02 15:00 | 57 | Аналитик; QA |
| 63 | 4.7 | Проверка вёрстки на разных разрешениях, фикс багов |  | 6h | 2026-11-06 08:00 | 2026-11-06 15:00 | 61, 62 | Frontend; QA |
| 64 | 4.8 | Спринт 2 принят | milestone | 0h | 2026-11-06 15:00 | 2026-11-06 15:00 | 63 |  |
| 65 | 5.1 | Описание логики блокировки мест при одновременном бронировании |  | 4h | 2026-11-16 09:00 | 2026-11-16 14:00 | 64FS+5.25d | Аналитик |
| 66 | 5.2 | Разработка структуры таблиц halls, seats, bookings |  | 6h | 2026-11-16 14:00 | 2026-11-17 11:00 | 65 | PM / Backend |
| 67 | 5.3 | API POST /bookings с SELECT FOR UPDATE (защита от двойных продаж) |  | 16h | 2026-11-17 11:00 | 2026-11-19 11:00 | 66 | Lead Dev |
| 68 | 5.4 | Вёрстка интерактивной схемы зала (CSS Grid, статусы мест) |  | 14h | 2026-11-16 14:00 | 2026-11-18 11:00 | 65 | Frontend |
| 69 | 5.5 | Интеграция: запрос на бронь и обработка HTTP 409 |  | 8h | 2026-11-19 11:00 | 2026-11-20 11:00 | 67, 68 | Frontend |
| 70 | 5.6 | Скрипт имитации одновременного бронирования (нагрузочный тест) |  | 8h | 2026-11-19 11:00 | 2026-11-20 11:00 | 67 | Аналитик; QA |
| 71 | 5.7 | Прогон сценариев, проверка отката транзакции |  | 6h | 2026-11-20 11:00 | 2026-11-23 09:00 | 69, 70 | Frontend; QA |
| 72 | 5.8 | Спринт 3 принят | milestone | 0h | 2026-11-23 09:00 | 2026-11-23 09:00 | 71 |  |
| 73 | 6.1 | Сценарий успешной/неуспешной оплаты и формат данных для QR |  | 3h | 2026-11-30 09:00 | 2026-11-30 12:00 | 72FS+4.88d | Аналитик |
| 74 | 6.2 | Создание таблицы tickets, связь с bookings |  | 4h | 2026-11-30 13:00 | 2026-11-30 17:00 | 73 | PM / Backend |
| 75 | 6.3 | Имитация оплаты, генерация QR (qrcode), API получения QR |  | 12h | 2026-12-01 08:00 | 2026-12-02 12:00 | 74 | Lead Dev |
| 76 | 6.4 | Вёрстка страницы оплаты и личного кабинета с билетами |  | 8h | 2026-11-30 13:00 | 2026-12-01 12:00 | 73 | Frontend |
| 77 | 6.5 | Отрисовка QR-кода на экране телефона (base64 через API) |  | 6h | 2026-12-02 13:00 | 2026-12-03 10:00 | 75, 76 | Frontend |
| 78 | 6.6 | Тестирование сценариев сбоя оплаты |  | 4h | 2026-12-02 13:00 | 2026-12-02 17:00 | 75 | Аналитик; QA |
| 79 | 6.7 | Проверка читаемости QR-кода обычным сканером |  | 4h | 2026-12-04 08:00 | 2026-12-04 12:00 | 77 | Frontend; QA |
| 80 | 6.8 | Требования к интерфейсу контроллера (ввод кода/сканирование) |  | 2h | 2026-11-30 13:00 | 2026-11-30 15:00 | 73 | Аналитик |
| 81 | 6.9 | API валидации билета (действителен/просрочен/подделка) |  | 6h | 2026-12-02 13:00 | 2026-12-03 10:00 | 75, 80 | Lead Dev |
| 82 | 6.10 | Вёрстка страницы контроллера |  | 6h | 2026-12-03 10:00 | 2026-12-03 17:00 | 77, 80 | Frontend |
| 83 | 6.11 | Интеграция страницы контроллера с API валидации |  | 4h | 2026-12-04 13:00 | 2026-12-04 17:00 | 81, 82 | Frontend |
| 84 | 6.12 | Создание базы тестовых QR-кодов |  | 4h | 2026-12-03 10:00 | 2026-12-03 15:00 | 81 | Аналитик; QA |
| 85 | 6.13 | Тестирование проходного режима |  | 4h | 2026-12-07 09:00 | 2026-12-07 14:00 | 83, 84 | QA |
| 86 | 6.14 | End-to-End тестирование: от регистрации до прохода по QR |  | 8h | 2026-12-07 14:00 | 2026-12-08 14:00 | 78, 79, 85 | PM / Backend; Lead Dev; Frontend; QA; Аналитик |
| 87 | 6.15 | Регрессионное тестирование |  | 8h | 2026-12-08 14:00 | 2026-12-09 14:00 | 86 | Аналитик; QA |
| 88 | 6.16 | Спринт 4 принят | milestone | 0h | 2026-12-09 14:00 | 2026-12-09 14:00 | 87 |  |

Notes:
- 7: Повторяющиеся задачи: каждый понедельник.
- 8: Повторяющаяся задача: каждый понедельник.
- 17: Повторяющаяся задача: каждый понедельник.
- 26: Повторяющаяся задача: каждый понедельник.
- 35: Роль: [PM / Backend]. Плановая длительность: 8 ч.
- 36: Роль: [PM / Backend, Lead Dev, Frontend, QA, Аналитик]. Плановая длительность: 4 ч.
- 37: Роль: [PM / Backend, Lead Dev, Frontend, QA, Аналитик]. Плановая длительность: 2 ч.
- 38: Роль: [PM / Backend]. Плановая длительность: 4 ч.
- 39: Роль: [PM / Backend]. Плановая длительность: 8 ч.
- 40: Роль: [PM / Backend, Lead Dev, Frontend, QA, Аналитик]. Плановая длительность: 4 ч.
- 43: Роль: [PM / Backend]. Плановая длительность: 4 ч.
- 44: Роль: [Lead Dev]. Плановая длительность: 4 ч.
- 45: Роль: [PM / Backend]. Плановая длительность: 6 ч.
- 46: Роль: [QA]. Плановая длительность: 4 ч.
- 47: Роль: [Lead Dev]. Плановая длительность: 6 ч.
- 48: Роль: [Lead Dev]. Плановая длительность: 4 ч.
- 49: Роль: [Аналитик]. Плановая длительность: 4 ч.
- 50: Роль: [PM / Backend]. Плановая длительность: 4 ч.
- 51: Роль: [Lead Dev]. Плановая длительность: 12 ч.
- 52: Роль: [Frontend]. Плановая длительность: 8 ч.
- 53: Роль: [Frontend]. Плановая длительность: 6 ч.
- 54: Роль: [Аналитик, QA]. Плановая длительность: 2 ч.
- 55: Роль: [Frontend, QA]. Плановая длительность: 4 ч.
- 57: Роль: [Аналитик]. Плановая длительность: 2 ч.
- 58: Роль: [PM / Backend]. Плановая длительность: 6 ч.
- 59: Роль: [Lead Dev]. Плановая длительность: 8 ч.
- 60: Роль: [Frontend]. Плановая длительность: 10 ч.
- 61: Роль: [Frontend]. Плановая длительность: 6 ч.
- 62: Роль: [Аналитик, QA]. Плановая длительность: 2 ч.
- 63: Роль: [Frontend, QA]. Плановая длительность: 6 ч.
- 65: Роль: [Аналитик]. Плановая длительность: 4 ч.
- 66: Роль: [PM / Backend]. Плановая длительность: 6 ч.
- 67: Роль: [Lead Dev]. Плановая длительность: 16 ч.
- 68: Роль: [Frontend]. Плановая длительность: 14 ч.
- 69: Роль: [Frontend]. Плановая длительность: 8 ч.
- 70: Роль: [Аналитик, QA]. Плановая длительность: 8 ч.
- 71: Роль: [Frontend, QA]. Плановая длительность: 6 ч.
- 73: Роль: [Аналитик]. Плановая длительность: 3 ч.
- 74: Роль: [PM / Backend]. Плановая длительность: 4 ч.
- 75: Роль: [Lead Dev]. Плановая длительность: 12 ч.
- 76: Роль: [Frontend]. Плановая длительность: 8 ч.
- 77: Роль: [Frontend]. Плановая длительность: 6 ч.
- 78: Роль: [Аналитик, QA]. Плановая длительность: 4 ч.
- 79: Роль: [Frontend, QA]. Плановая длительность: 4 ч.
- 80: Роль: [Аналитик]. Плановая длительность: 2 ч.
- 81: Роль: [Lead Dev]. Плановая длительность: 6 ч.
- 82: Роль: [Frontend]. Плановая длительность: 6 ч.
- 83: Роль: [Frontend]. Плановая длительность: 4 ч.
- 84: Роль: [Аналитик, QA]. Плановая длительность: 4 ч.
- 85: Роль: [QA]. Плановая длительность: 4 ч.
- 86: Роль: [PM / Backend, Lead Dev, Frontend, QA, Аналитик]. Плановая длительность: 8 ч.
- 87: Роль: [Аналитик, QA]. Плановая длительность: 8 ч.
